# TrilinosRelease5

How a schedule from MS Project changed from version to version. A marks actual dates.

## Version 1 (saved 2004-11-17)

| ID | WBS | Task | Duration | Start | Finish | Predecessors | Total float | Constraint |
| --- | --- | --- | --- | --- | --- | --- | --- | --- |
| 1 |  | Verify which packages are to be included in the release | 30min | 2004-11-24 16:30 | 2004-11-24 17:00 |  | 1.75d | finish no later than 2004-11-24 17:00 |
| 2 |  | Figure out which packages need to go through the copyright process | 30min | 2004-11-29 16:30 | 2004-11-29 17:00 | 1 | 0.94d | finish no later than 2004-11-29 17:00 |
| 3 |  | Complete copyright process for packages that are to be released and are not copyrighted | 20d | 2005-01-12 08:00 | 2005-02-08 17:00 | 2 | 24d | finish no later than 2005-02-08 17:00 |
| 4 |  | Send note to developers about updating compiler check list in configure.ac | 30min | 2004-11-23 09:30 | 2004-11-23 10:00 |  | 0d | as late as possible |
| 5 |  | Update compiler selection list | 6h | 2004-11-30 10:00 | 2004-11-30 17:00 | 4FS+3d | 0d | as late as possible |
| 6 |  | Do initial verification of builds on important platforms | 30d | 2004-12-01 08:00 | 2005-01-20 17:00 | 1, 5 | 0d | finish no later than 2005-01-20 17:00 |
| 7 |  | Implement make check | 4d | 2004-12-13 08:00 | 2004-12-16 17:00 |  | 11.81d | finish no later than 2004-12-16 17:00 |
| 8 |  | Clarify TSF package structure | 2d | 2004-12-08 08:00 | 2004-12-09 17:00 |  | 8.81d | finish no later than 2004-12-09 17:00 |
| 9 |  | Autotool Pliris | 5h | 2004-12-01 11:00 | 2004-12-01 17:00 |  | 4.19d | finish no later than 2004-12-01 17:00 |
| 10 |  | Integrate cmmlib into top level | 3d | 2004-11-29 08:00 | 2004-12-01 17:00 |  | 1.81d | start no later than 2004-11-29 08:00 |
| 11 | 11 | **Implement Software Quality Plan requirements** | 3d | 2005-01-27 08:00 | 2005-01-31 17:00 |  | 37.81d | as late as possible |
| 12 |  | Create SQP checklists | 3d | 2005-01-27 08:00 | 2005-01-31 17:00 |  | 37.81d | finish no later than 2005-02-05 17:00 |
| 13 |  | Document that requirements are satisfied (package level) | 3d | 2005-02-04 08:00 | 2005-02-08 17:00 |  | 43.81d | finish no later than 2005-02-08 17:00 |
| 14 |  | Packages need to support make dist | 4d | 2004-12-13 08:00 | 2004-12-16 17:00 |  | 11.81d | finish no later than 2004-12-16 17:00 |
| 15 |  | Send email about repository freeze | 30min | 2005-01-10 08:00 | 2005-01-10 08:30 |  | 24.81d | start no later than 2005-01-10 08:00 |
| 16 |  | Freeze repository | 0d | 2005-02-01 08:00 | 2005-02-01 08:00 | 1, 6, 7, 9, 11SS, 12, 14, 15, 10, 5, 8 | 7d | start no later than 2005-02-01 08:00 |
| 17 |  | Create 5.0 release branch | 2.5h | 2005-02-01 14:00 | 2005-02-01 16:30 | 16 | 7.62d | finish no later than 2005-02-01 17:00 |
| 18 |  | Send note to dev list including name of release branch | 30min | 2005-02-01 16:30 | 2005-02-01 17:00 | 17 | 0d | must finish on 2005-02-01 17:00 |
| 19 |  | Sierra Verification testing | 8d | 2005-02-02 08:00 | 2005-02-11 17:00 | 18 | 0d | finish no later than 2005-02-11 17:00 |
| 20 |  | Alegra Verification testing | 16d | 2005-02-03 08:00 | 2005-02-24 17:00 | 18, 19SS+1d | 0d | finish no later than 2005-02-24 17:00 |
| 21 |  | Set up the Trilinos 5.0 website | 2d | 2005-02-02 15:24 | 2005-02-04 15:24 | 18 | 0.8d | finish no later than 2005-02-04 15:24 |
| 22 |  | Set up 5.0 test harness runs | 7d | 2005-02-03 08:00 | 2005-02-11 17:00 | 17 | 8.69d | finish no later than 2005-02-11 17:00 |
| 23 |  | Send request to developers for release notes | 30min | 2005-02-02 08:00 | 2005-02-02 08:30 | 18 | 0d | start no later than 2005-02-02 08:00 |
| 24 |  | Add release notes to repository, tarball and web | 1h | 2005-02-25 16:00 | 2005-02-25 17:00 | 23FS+3d, 21 | 14.81d | finish no later than 2005-02-25 17:00 |
| 25 |  | Send note to dev list to encourage package developers to send a note to their user lists about new release features | 30min | 2005-02-25 08:00 | 2005-02-25 08:30 | 19, 20 | 0d | finish no later than 2005-02-25 08:30 |
| 26 |  | Create preliminary version of distribution tarball | 3.5h | 2005-02-02 08:00 | 2005-02-02 11:30 | 17, 14 | 7.69d | finish no later than 2005-02-02 11:30 |
| 27 |  | Obtain permission for release from Project Leader | 3h | 2005-02-25 14:30 | 2005-02-28 08:30 | 26 | 24.94d | as late as possible |
| 28 |  | Regenerate tarball and post on 5.0 website | 1.5h | 2005-02-28 08:30 | 2005-02-28 10:00 | 19, 20, 27 | 1.06d | finish no later than 2005-02-28 10:00 |
| 29 |  | Announce release via Trilinos-Announce list | 30min | 2005-03-01 16:30 | 2005-03-01 17:00 | 28 | 2.75d | as late as possible |
| 30 | 29 | **SQP checkup** | 53.38d | 2004-11-30 08:00 | 2005-02-22 11:00 |  | 2.81d | as late as possible |
| 31 |  | SQP checkup 1 | 3h | 2004-11-30 08:00 | 2004-11-30 11:00 |  | 2.81d | start no later than 2004-11-30 08:00 |
| 32 |  | SQP checkup 2 | 3h | 2004-12-14 08:00 | 2004-12-14 11:00 |  | 12.81d | start no later than 2004-12-14 08:00 |
| 33 |  | SQP checkup 3 | 3h | 2005-01-11 08:00 | 2005-01-11 11:00 |  | 25.81d | start no later than 2005-01-11 08:00 |
| 34 |  | SQP checkup 4 | 3h | 2005-01-25 08:00 | 2005-01-25 11:00 |  | 35.81d | start no later than 2005-01-25 08:00 |
| 35 |  | SQP checkup 5 | 3h | 2005-02-08 08:00 | 2005-02-08 11:00 |  | 45.81d | start no later than 2005-02-08 08:00 |
| 36 |  | SQP checkup 6 | 3h | 2005-02-22 08:00 | 2005-02-22 11:00 |  | 55.81d | start no later than 2005-02-22 08:00 |

## Version 2 (saved 2004-12-02)

Last finish stays 2005-03-01. Complete tasks 0 → 2.

Changed:

| ID | Task | Start | Finish | Duration | Complete | Total float | Predecessors | Other |
| --- | --- | --- | --- | --- | --- | --- | --- | --- |
| 1 | Verify which packages are to be included in the release | 2004-11-24 16:30 A | 2004-11-24 17:00 → 2004-12-02 16:51 A (+8d) |  | 0% → 100% | 1.75d → none |  | constraint finish no later than 2004-11-24 17:00 → finish no later than 2004-12-02 17:00 |
| 2 | Figure out which packages need to go through the copyright process | 2004-11-29 16:30 A | 2004-11-29 17:00 → 2004-12-02 17:00 A (+3d) |  | 0% → 100% | 0.94d → none |  | constraint finish no later than 2004-11-29 17:00 → finish no later than 2004-12-02 17:00 |
| 4 | Send note to developers about updating compiler check list in configure.ac | 2004-11-23 09:30 → 2004-12-03 10:30 (+10d) | 2004-11-23 10:00 → 2004-12-03 11:00 (+10d) |  |  | 0d → 4.38d |  |  |
| 5 | Update compiler selection list | 2004-11-30 10:00 → 2004-12-07 11:00 (+7d) | 2004-11-30 17:00 → 2004-12-07 17:00 (+7d) | 6h → 5h |  | 0d → 4.38d | 4FS+3d → 4FS+2d |  |
| 6 | Do initial verification of builds on important platforms | 2004-12-01 08:00 → 2004-12-08 08:00 (+7d) | 2005-01-20 17:00 → 2005-01-25 17:00 (+5d) | 30d → 28d |  | 0d → 3.02d |  | constraint finish no later than 2005-01-20 17:00 → finish no later than 2005-01-25 17:00 |
| 8 | Clarify and rework TSF package structure | 2004-12-08 08:00 A |  |  | 0% → 20% | 8.81d → 0d |  | was named Clarify TSF package structure |
| 9 | Autotool Pliris | 2004-12-01 11:00 → 2004-11-30 08:00 A (-1d) |  | 5h → 2d | 0% → 30% | 4.19d → 0d |  |  |
| 14 | Packages need to support make dist | 2004-12-13 08:00 → 2004-12-14 08:00 A (+1d) |  | 4d → 3d | 0% → 80% | 11.81d → 0d |  |  |

## Version 3 (saved 2004-12-15)

Last finish stays 2005-03-01.

Removed: 10 Integrate cmmlib into top level

Changed:

| ID | Task | Start | Finish | Duration | Complete | Total float | Predecessors | Other |
| --- | --- | --- | --- | --- | --- | --- | --- | --- |
| 3 | Complete copyright process for packages that are to be released and are not copyrighted | 2005-01-12 08:00 A |  |  | 0% → 5% | 24d → 0d |  |  |
| 4 | Send note to developers about updating compiler check list in configure.ac | 2004-12-03 10:30 → 2004-12-21 10:30 (+18d) | 2004-12-03 11:00 → 2004-12-21 11:00 (+18d) |  |  | 4.38d → 16.38d |  |  |
| 5 | Update compiler selection list | 2004-12-07 11:00 → 2004-12-23 11:00 (+16d) | 2004-12-07 17:00 → 2004-12-23 17:00 (+16d) |  |  | 4.38d → 16.38d |  |  |
| 6 | Do initial verification of builds on important platforms | 2004-12-08 08:00 → 2005-01-04 08:00 (+27d) |  | 28d → 16d |  | 3.02d → 15.02d |  |  |
| 9 | Autotool Pliris |  | 2004-12-01 17:00 → 2004-12-10 17:00 (+9d) |  |  |  |  | constraint finish no later than 2004-12-01 17:00 → finish no later than 2004-12-10 17:00 |
| 15 | Freeze repository |  |  |  |  | 7d → 7.02d | 1, 6, 7, 9, 10SS, 11, 13, 14, Integrate cmmlib into top level, 5, 8 → 1, 6, 7, 9, 10SS, 11, 13, 14, 5, 8 |  |

## Version 4 (saved 2004-12-20)

Last finish stays 2005-03-01. Complete tasks 2 → 4.

Changed:

| ID | Task | Finish | Complete | Total float | Other |
| --- | --- | --- | --- | --- | --- |
| 8 | Clarify and rework TSF package structure - not necessary for this release | 2004-12-09 17:00 A | 20% → 100% | 0d → none | was named Clarify and rework TSF package structure |
| 13 | Packages need to support make dist | 2004-12-16 17:00 A | 80% → 100% | 0d → none |  |

## Version 5 (saved 2005-01-19)

Last finish stays 2005-03-01.

Removed: 30 SQP checkup 1; 31 SQP checkup 2

Changed:

| ID | Task | Start | Duration | Complete | Total float |
| --- | --- | --- | --- | --- | --- |
| 3 | Complete copyright process for packages that are to be released and are not copyrighted |  |  | 5% → 60% |  |
| 7 | Implement make check | 2004-12-13 08:00 A |  | 0% → 10% | 11.81d → 0d |
| 10 | **Implement Software Quality Plan requirements** | 2005-01-27 08:00 A |  | 0% → 10% | 36.06d → 0d |
| 11 | Create SQP checklists | 2005-01-27 08:00 A |  | 0% → 10% | 36.06d → 0d |
| 29 | **SQP checkup** | 2004-11-30 08:00 → 2005-01-11 08:00 (+42d) | 53.38d → 30.38d |  | 1.06d → 24.06d |

## Version 6 (saved 2005-02-02)

Last finish stays 2005-03-01. Complete tasks 4 → 11.

Removed: 4 Send note to developers about updating compiler check list in configure.ac; 5 Update compiler selection list

Changed:

| ID | Task | Start | Finish | Duration | Complete | Total float | Predecessors | Other |
| --- | --- | --- | --- | --- | --- | --- | --- | --- |
| 4 | Do initial verification of builds on important platforms | 2005-01-04 08:00 A | 2005-01-25 17:00 A |  | 0% → 100% | 15.02d → none | 1, Update compiler selection list → 1 |  |
| 5 | Implement make check |  |  |  | 10% → 40% |  |  |  |
| 7 | Autotool Pliris |  | 2004-12-10 17:00 → 2005-01-31 17:00 A (+52d) | 2d → 38d | 30% → 100% | 0d → none |  | constraint finish no later than 2004-12-10 17:00 → finish no later than 2005-01-31 17:00 |
| 8 | **Implement Software Quality Plan requirements** |  | 2005-01-31 17:00 A |  | 10% → 100% | 0d → none |  |  |
| 9 | Create SQP checklists for release |  | 2005-01-31 17:00 A |  | 10% → 100% | 0d → none |  | was named Create SQP checklists |
| 12 | Send email about repository freeze | 2005-01-10 08:00 → 2005-01-31 08:00 A (+21d) | 2005-01-10 08:30 → 2005-01-31 17:00 A (+21d) | 30min → 480min | 0% → 100% | 23.06d → none |  | constraint start no later than 2005-01-10 08:00 → finish no later than 2005-01-31 17:00 |
| 13 | Freeze repository | 2005-02-01 08:00 A | 2005-02-01 08:00 A |  | 0% → 100% | 0d → none | 1, 4, 5, 7, 8SS, 9, 11, 12, Update compiler selection list, 6 → 1, 4, 5, 7, 8SS, 9, 11, 12, 6 |  |
| 14 | Create 5.0 release branch | 2005-02-01 14:00 A | 2005-02-01 16:30 A |  | 0% → 100% | 7.64d → none |  |  |
| 15 | Send note to dev list including name of release branch | 2005-02-01 16:30 A | 2005-02-01 17:00 A |  | 0% → 100% | 0d → none |  |  |

## Version 7 (saved 2005-02-24)

Last finish stays 2005-03-01. Complete tasks 11 → 12.

Removed: 27 SQP checkup; 28 SQP checkup 3; 29 SQP checkup 4; 30 SQP checkup 5; 31 SQP checkup 6

Changed:

| ID | Task | Start | Finish | Complete | Total float |
| --- | --- | --- | --- | --- | --- |
| 19 | Set up 5.0 test harness runs | 2005-02-03 08:00 A | 2005-02-11 17:00 A | 0% → 100% | 1.69d → none |

## Version 8 (saved 2005-03-03)

Last finish 2005-03-01 → 2005-03-07 (+6d). Complete tasks 12 → 24.

Removed: 10 Document that requirements are satisfied (package level)

Changed:

| ID | Task | Start | Finish | Duration | Complete | Total float | Other |
| --- | --- | --- | --- | --- | --- | --- | --- |
| 1 | Verify which packages are to be included in the release | 2004-11-24 16:30 A → 2004-11-24 A | 2004-12-02 16:51 A → 2004-12-02 A |  |  |  | constraint finish no later than 2004-12-02 17:00 → finish no later than 2004-12-02 |
| 2 | Figure out which packages need to go through the copyright process | 2004-11-29 16:30 A → 2004-11-29 A | 2004-12-02 17:00 A → 2004-12-02 A |  |  |  | constraint finish no later than 2004-12-02 17:00 → finish no later than 2004-12-02 |
| 3 | Complete copyright process for packages that are to be released and are not copyrighted | 2005-01-12 08:00 A → 2005-01-12 A | 2005-02-08 17:00 → 2005-02-25 A (+17d) | 20d → 33d | 60% → 100% | 0d → none | constraint finish no later than 2005-02-08 17:00 → finish no later than 2005-02-25 |
| 4 | Do initial verification of builds on important platforms | 2005-01-04 08:00 A → 2005-01-04 A | 2005-01-25 17:00 A → 2005-01-25 A |  |  |  | constraint finish no later than 2005-01-25 17:00 → finish no later than 2005-01-25 |
| 5 | Implement make check | 2004-12-13 08:00 A → 2004-12-13 A | 2004-12-16 17:00 → 2004-12-16 A |  | 40% → 100% | 0d → none | constraint finish no later than 2004-12-16 17:00 → finish no later than 2004-12-16 |
| 6 | Clarify and rework TSF package structure - not necessary for this release | 2004-12-08 08:00 A → 2004-12-08 A | 2004-12-09 17:00 A → 2004-12-09 A |  |  |  | constraint finish no later than 2004-12-09 17:00 → finish no later than 2004-12-09 |
| 7 | Autotool Pliris | 2004-11-30 08:00 A → 2004-11-30 A | 2005-01-31 17:00 A → 2005-01-31 A |  |  |  | constraint finish no later than 2005-01-31 17:00 → finish no later than 2005-01-31 |
| 8 | **Implement Software Quality Plan requirements** | 2005-01-27 08:00 A → 2005-01-27 A | 2005-01-31 17:00 A → 2005-01-31 A |  |  |  |  |
| 9 | Create SQP checklists for release | 2005-01-27 08:00 A → 2005-01-27 A | 2005-01-31 17:00 A → 2005-01-31 A |  |  |  | constraint finish no later than 2005-02-05 17:00 → finish no later than 2005-02-05 |
| 10 | Packages need to support make dist | 2004-12-14 08:00 A → 2004-12-14 A | 2004-12-16 17:00 A → 2004-12-16 A |  |  |  | constraint finish no later than 2004-12-16 17:00 → finish no later than 2004-12-16 |
| 11 | Send email about repository freeze | 2005-01-31 08:00 A → 2005-01-31 A | 2005-01-31 17:00 A → 2005-01-31 A |  |  |  | constraint finish no later than 2005-01-31 17:00 → finish no later than 2005-01-31 |
| 12 | Freeze repository | 2005-02-01 08:00 A → 2005-02-01 A | 2005-02-01 08:00 A → 2005-02-01 A |  |  |  | constraint start no later than 2005-02-01 08:00 → start no later than 2005-02-01 |
| 13 | Create 5.0 release branch | 2005-02-01 14:00 A → 2005-02-01 A | 2005-02-01 16:30 A → 2005-02-01 A |  |  |  | constraint finish no later than 2005-02-01 17:00 → finish no later than 2005-02-01 |
| 14 | Send note to dev list including name of release branch | 2005-02-01 16:30 A → 2005-02-01 A | 2005-02-01 17:00 A → 2005-02-01 A |  |  |  | constraint must finish on 2005-02-01 17:00 → must finish on 2005-02-01 |
| 15 | Sierra Verification testing | 2005-02-02 08:00 → 2005-02-02 A | 2005-02-11 17:00 → 2005-02-28 A (+17d) | 8d → 19d | 0% → 100% | 0d → none | constraint finish no later than 2005-02-11 17:00 → finish no later than 2005-02-11 |
| 16 | Alegra Verification testing | 2005-02-03 08:00 → 2005-02-03 A | 2005-02-24 17:00 → 2005-03-02 A (+6d) | 16d → 20d | 0% → 100% | 0d → none | constraint finish no later than 2005-02-24 17:00 → finish no later than 2005-02-24 |
| 17 | Set up the Trilinos 5.0 website | 2005-02-02 15:24 → 2005-02-02 A | 2005-02-04 15:24 → 2005-02-25 A (+21d) | 2d → 17.2d | 0% → 100% | 0.8d → none | constraint finish no later than 2005-02-04 15:24 → finish no later than 2005-02-04 |
| 18 | Set up 5.0 test harness runs | 2005-02-03 08:00 A → 2005-02-03 A | 2005-02-11 17:00 A → 2005-02-16 A (+5d) | 7d → 10d |  |  | constraint finish no later than 2005-02-11 17:00 → finish no later than 2005-02-11 |
| 19 | Send request to developers for release notes | 2005-02-02 08:00 → 2005-02-02 A | 2005-02-02 08:30 → 2005-02-02 A |  | 0% → 100% | 0d → none | constraint start no later than 2005-02-02 08:00 → start no later than 2005-02-02 |
| 20 | Add release notes to repository, tarball and web | 2005-02-25 16:00 → 2005-02-25 A | 2005-02-25 17:00 → 2005-03-03 A (+6d) | 1h → 33h | 0% → 100% | 14.81d → none | constraint finish no later than 2005-02-25 17:00 → finish no later than 2005-02-25 |
| 21 | Send note to dev list to encourage package developers to send a note to their user lists about new release features | 2005-02-25 08:00 → 2005-03-03 A (+6d) | 2005-02-25 08:30 → 2005-03-03 A (+6d) | 30min → 480min | 0% → 100% | 0d → none | constraint finish no later than 2005-02-25 08:30 → finish no later than 2005-03-03 |
| 22 | Create preliminary version of distribution tarball | 2005-02-02 08:00 → 2005-02-02 A | 2005-02-02 11:30 → 2005-02-24 A (+22d) | 3.5h → 136h | 0% → 100% | 0.69d → none | constraint finish no later than 2005-02-02 11:30 → finish no later than 2005-02-02 |
| 23 | Obtain permission for release from Project Leader | 2005-02-25 14:30 → 2005-03-02 A (+5d) | 2005-02-28 08:30 → 2005-03-07 A (+7d) | 3h → 26.5h | 0% → 100% | 17.94d → none |  |
| 24 | Regenerate tarball and post on 5.0 website | 2005-02-28 08:30 → 2005-03-03 A (+3d) | 2005-02-28 10:00 → 2005-03-03 A (+3d) | 1.5h → 8h | 0% → 100% | 1.06d → none | constraint finish no later than 2005-02-28 10:00 → finish no later than 2005-03-03 |
| 25 | Announce release via Trilinos-Announce list | 2005-03-01 16:30 → 2005-03-03 A (+2d) | 2005-03-01 17:00 → 2005-03-03 A (+2d) | 30min → 480min | 0% → 100% | 2.75d → none | constraint as late as possible → finish no later than 2005-03-03 |
