# TrilinosRelease5

How a schedule from MS Project changed from version to version. A marks actual dates.

## Version 1 (saved 2005-07-20)

| ID | WBS | Task | Duration | Start | Finish | Predecessors | Complete | Total float | Constraint |
| --- | --- | --- | --- | --- | --- | --- | --- | --- | --- |
| 1 |  | Verify which packages are to be included in the release | 45min | 2005-07-20 08:00 A | 2005-07-26 08:36 A |  | 100% |  | finish no later than 2005-07-28 17:00 |
| 2 |  | Figure out which packages need to go through the copyright process | 21min | 2005-07-15 08:00 A | 2005-07-18 17:00 A | 1 | 100% |  | finish no later than 2004-12-02 17:00 |
| 3 |  | File All release-related Bugzilla Bugs | 3d | 2005-07-20 08:00 | 2005-07-22 17:00 | 1 |  | 0d | must start on 2005-07-20 08:00 |
| 4 |  | Try to setup more alegra testing | 5h | 2004-12-23 11:00 | 2004-12-23 17:00 |  |  | 16.38d | as late as possible |
| 5 |  | Complete copyright process for packages that are to be released and are not copyrighted | 29d | 2005-07-15 08:00 A | 2005-08-24 17:00 | 2 | 11% | 0d | finish no later than 2005-08-24 17:00 |
| 6 |  | Do initial verification of builds on important platforms | 4d | 2005-07-26 08:00 | 2005-07-29 17:00 | 1 |  | -0.07d | finish no later than 2005-08-05 17:00 |
| 7 | 7 | **Implement Software Quality Plan requirements** | 3d | 2005-07-14 08:00 A | 2005-07-18 17:00 A |  | 100% |  | as late as possible |
| 8 |  | Update SQP checklists for release | 3d | 2005-07-14 08:00 A | 2005-07-18 17:00 A |  | 100% |  | finish no later than 2005-02-05 17:00 |
| 9 |  | Packages need to support make dist | 4d | 2005-08-04 08:00 A | 2005-08-09 17:00 | 1 | 30% | 0d | finish no later than 2005-08-11 17:00 |
| 10 |  | Send email about repository freeze | 30min | 2005-07-28 16:30 | 2005-07-28 17:00 |  |  | 10.94d | finish no later than 2005-07-28 17:00 |
| 11 |  | Freeze repository | 0d | 2005-08-01 08:00 | 2005-08-01 08:00 | 1, 6, 7SS, 8, 9, 10 |  | -7d | start no later than 2005-08-01 08:00 |
| 12 |  | Create 6.0 release branch | 30min | 2005-08-01 11:30 | 2005-08-01 12:00 | 11 |  | -6.56d | finish no later than 2005-08-01 12:00 |
| 13 |  | Send note to dev list including name of release branch | 30min | 2005-08-01 12:00 | 2005-08-01 13:30 | 12 |  | -6.56d | start no later than 2005-08-01 12:00 |
| 14 |  | Sierra Verification testing | 16d | 2005-08-03 08:00 | 2005-08-24 17:00 | 13 |  | -5.12d | finish no later than 2005-08-24 17:00 |
| 15 |  | Alegra Verification testing | 13d | 2005-08-09 08:00 | 2005-08-25 17:00 | 13, 14SS+1d |  | -2.12d | finish no later than 2005-08-25 17:00 |
| 16 |  | Set up the Trilinos 6.0 website | 7d | 2005-08-10 08:00 | 2005-08-18 17:00 | 13 |  | -0.12d | finish no later than 2005-08-18 17:00 |
| 17 |  | Set up 6.0 test harness runs | 4d | 2005-08-02 08:00 | 2005-08-05 17:00 | 12 |  | -6.06d | finish no later than 2005-08-06 12:00 |
| 18 |  | Send request to developers for release notes | 30min | 2005-08-10 08:00 | 2005-08-10 08:30 | 13 |  | -0.12d | start no later than 2005-08-10 08:00 |
| 19 |  | Add release notes to repository, tarball and web | 16h | 2005-08-30 08:00 | 2005-08-31 17:00 | 18FS+3d, 16 |  | 6.88d | start no later than 2005-08-30 08:00 |
| 20 |  | Send note to dev list to encourage package developers to send a note to their user lists about new release features | 30min | 2005-08-29 16:30 | 2005-08-29 17:00 | 14, 15 |  | -2.19d | finish no later than 2005-08-29 17:00 |
| 21 |  | Create preliminary version of distribution tarball | 24h | 2005-08-02 08:00 | 2005-08-04 17:00 | 12, 9 |  | -6.06d | finish no later than 2005-08-04 17:00 |
| 22 |  | Obtain permission for release from Project Leader | 8h | 2005-08-31 08:00 | 2005-08-31 17:00 | 21 |  | 11.94d | finish no later than 2005-09-01 17:00 |
| 23 |  | Regenerate tarball and post on 6.0 website | 6h | 2005-09-01 08:00 | 2005-09-01 15:00 | 14, 15, 22 |  | -0.12d | start no later than 2005-09-01 08:00 |
| 24 |  | Announce release via Trilinos-Announce list | 45min | 2005-09-01 16:15 | 2005-09-01 17:00 | 23 |  | 0.03d | finish no later than 2005-09-01 17:00 |

## Version 2 (saved 2005-08-01)

Last finish stays 2005-09-01. Complete tasks 3 → 7.

Changed:

| ID | Task | Start | Finish | Duration | Complete | Total float | Other |
| --- | --- | --- | --- | --- | --- | --- | --- |
| 6 | Do initial verification of builds on important platforms | 2005-07-26 08:00 → 2005-08-02 08:00 (+7d) | 2005-07-29 17:00 → 2005-08-05 17:00 (+7d) |  |  | -0.07d → 4.92d |  |
| 10 | Send email about repository freeze | 2005-07-28 16:30 → 2005-07-29 08:00 A (+1d) | 2005-07-28 17:00 → 2005-07-29 08:15 A (+1d) | 30min → 15min | 0% → 100% | 10.94d → none | constraint finish no later than 2005-07-28 17:00 → finish no later than 2005-07-29 17:00 |
| 11 | Freeze repository | 2005-08-01 08:00 A | 2005-08-01 08:00 A |  | 0% → 100% | -7d → none |  |
| 12 | Create 6.0 release branch | 2005-08-01 11:30 → 2005-08-01 10:00 A | 2005-08-01 12:00 A | 30min → 2h | 0% → 100% | -6.56d → none |  |
| 13 | Send note to dev list including name of release branch | 2005-08-01 12:00 A | 2005-08-01 13:30 A |  | 0% → 100% | -6.56d → none |  |

## Version 3 (saved 2005-09-12)

Last finish stays 2005-09-01. Complete tasks 7 → 15.

Removed: 4 Try to setup more alegra testing

Changed:

| ID | Task | Start | Finish | Duration | Complete | Total float | Other |
| --- | --- | --- | --- | --- | --- | --- | --- |
| 3 | File All release-related Bugzilla Bugs | 2005-07-20 08:00 A | 2005-07-22 17:00 A |  | 0% → 100% | 0d → none |  |
| 4 | Complete copyright process for packages that are to be released and are not copyrighted |  | 2005-08-24 17:00 → 2005-08-04 17:00 A (-20d) | 29d → 15d | 11% → 100% | 0d → none | constraint finish no later than 2005-08-24 17:00 → finish no later than 2005-08-04 17:00 |
| 5 | Do initial verification of builds on important platforms | 2005-08-02 08:00 A | 2005-08-05 17:00 A |  | 0% → 100% | 4.92d → none |  |
| 8 | Packages need to support make dist |  | 2005-08-09 17:00 → 2005-08-11 17:00 (+2d) |  |  |  |  |
| 13 | Sierra Verification testing | 2005-08-03 08:00 A | 2005-08-24 17:00 A |  | 0% → 100% | 1.44d → none |  |
| 14 | Alegra Verification testing | 2005-08-09 08:00 A | 2005-08-25 17:00 A |  | 0% → 100% | 4.44d → none |  |
| 16 | Set up 6.0 test harness runs | 2005-08-02 08:00 A | 2005-08-05 17:00 A |  | 0% → 100% | 0.5d → none |  |
| 17 | Send request to developers for release notes | 2005-08-10 08:00 A | 2005-08-10 08:30 A |  | 0% → 100% | 6.44d → none |  |
| 20 | Create preliminary version of distribution tarball | 2005-08-02 08:00 A | 2005-08-04 17:00 A |  | 0% → 100% | -6.06d → none |  |
